# Spring 2008 Schedule~671

Schedule from MS Project, 2008-04-01 to 2008-09-15, A marks actual dates.

## Calendars

- Standard: Mon-Fri 08:00-12:00, 13:00-17:00; Sat-Sun off. Exceptions (off unless hours are given): 2008-04-06 08:00-12:00, 13:00-17:00, 2008-04-12 to 2008-04-13 08:00-12:00, 13:00-17:00, 2008-04-19 08:00-12:00, 13:00-17:00, 2008-05-11 08:00-12:00, 13:00-17:00.

## Schedule

| ID | Task | Duration | Start | Finish | Predecessors | Complete | Constraint |
| --- | --- | --- | --- | --- | --- | --- | --- |
| 1 | Build all unary gates in lab | 0.8w? | 2008-04-01 A | 2008-04-04 A |  | 100% | finish no earlier than 2008-04-04 |
| 2 | Build a 3:1 multiplexer | 2.5d? | 2008-04-03 A | 2008-04-07 A | 1 | 100% |  |
| 3 | Antonio learn Ltspice | 3d? | 2008-04-02 A | 2008-04-04 A |  | 100% | start no earlier than 2008-04-02 |
| 4 | Chirag learn and setup git | 10d? | 2008-04-02 A | 2008-04-13 A |  | 100% | finish no earlier than 2008-04-13 |
| 5 | Himanshu administrative tasks | 13d? | 2008-04-01 A | 2008-04-14 A |  | 100% | finish no earlier than 2008-04-14 |
| 6 | Expression evaluator working | 1.4w? | 2008-04-01 A | 2008-04-09 A |  | 100% | finish no earlier than 2008-04-09 |
| 7 | Senior project proposal due | 1d? | 2008-04-07 A | 2008-04-07 A |  | 100% | start no earlier than 2008-04-07 |
| 8 | Build dyadic gates in lab | 0.5w? | 2008-04-08 A | 2008-04-10 A |  | 100% | start no earlier than 2008-04-09 |
| 9 | Build ternary cycling gate | 3d? | 2008-04-16 A | 2008-04-18 A |  | 100% | finish no earlier than 2008-04-18 |
| 10 | Wiki server RAID 0+1->1 disk upgrades | 7d? | 2008-04-06 A | 2008-04-12 A |  | 100% | start no earlier than 2008-04-06 |
| 11 | Honors Open House - decide on timeslot | 11d? | 2008-04-09 A | 2008-04-19 A |  | 100% | finish no earlier than 2008-04-19 |
| 12 | Honors Open House Poster Due | 9d? | 2008-04-08 A | 2008-04-16 A |  | 100% | finish no earlier than 2008-04-16 |
| 13 | Instruction-level simulator working | 5.5d? | 2008-04-10 A | 2008-04-15 A | 6 | 100% |  |
| 14 | Honors Open House Presentation 1:30-2 | 1d? | 2008-04-19 A | 2008-04-19 A |  | 100% | finish no earlier than 2008-04-19 |
| 15 | Simulate all tri-flop circuits | 16d? | 2008-04-03 A | 2008-04-21 A |  | 100% | finish no earlier than 2008-04-21 |
| 16 | Build dtflop-ms tri-flop circuit | 9.5d? | 2008-04-10 A | 2008-04-19 A |  | 100% | finish no earlier than 2008-04-19 |
| 17 | Circuit layout program functional | 8d? | 2008-04-11 A | 2008-04-18 A |  | 100% | finish no earlier than 2008-04-18 |
| 18 | Order and receive purchase #3 | 17.5d? | 2008-04-02 A | 2008-04-21 A |  | 100% | finish no earlier than 2008-04-16 |
| 19 | Design SP3T footprint for FreePCB | 5d? | 2008-04-21 A | 2008-04-25 A |  | 100% | finish no earlier than 2008-04-25 |
| 20 | Label all nodes in LTspice properly | 1d? | 2008-04-21 A | 2008-04-21 A |  | 100% | finish no earlier than 2008-05-02 |
| 21 | Decide about reading textbook | 1d? | 2008-04-28 A | 2008-04-28 A |  | 100% | finish no earlier than 2008-04-28 |
| 22 | SWROM PCB layout and routing | 5d? | 2008-04-24 A | 2008-04-30 A |  | 100% | finish no earlier than 2008-04-30 |
| 23 | Design and simulate ALU | 13d? | 2008-04-21 A | 2008-05-07 A |  | 100% | finish no earlier than 2008-05-07 |
| 24 | Expression creator functional | 7d | 2008-04-21 A | 2008-04-29 A |  | 100% | finish no earlier than 2008-04-29 |
| 25 | Order PCB for 9-bit SWROM | 10d? | 2008-04-28 A | 2008-05-09 A |  | 100% | start no earlier than 2008-04-28 |
| 26 | Retest dtflop-ms in lab | 6d? | 2008-04-28 A | 2008-05-05 A |  | 100% | finish no earlier than 2008-05-05 |
| 27 | Layout memory board | 2d? | 2008-05-05 A | 2008-05-06 A |  | 100% | finish no earlier than 2008-05-06 |
| 28 | CMP instruction working | 6d? | 2008-05-05 A | 2008-05-12 A |  | 100% | finish no earlier than 2008-05-12 |
| 29 | Order PCB of memory board | 2d? | 2008-05-06 A | 2008-05-07 A |  | 100% | finish no earlier than 2008-05-07 |
| 30 | Layout mux board | 6d? | 2008-05-05 A | 2008-05-12 A |  | 100% | finish no earlier than 2008-05-12 |
| 31 | Order PCB of control board | 1d? | 2008-05-12 A | 2008-05-12 A | 28 | 100% | start no earlier than 2008-05-12 |
| 32 | Base 3 converter functional | 16d | 2008-04-21 A | 2008-05-12 A |  | 100% | finish no earlier than 2008-05-12 |
| 33 | Chirag install git on MacBook | 6d? | 2008-05-05 A | 2008-05-12 A |  | 100% | start no earlier than 2008-05-05 |
| 34 | Honors Progress Report 2 | 2d | 2008-05-06 A | 2008-05-07 A |  | 100% | finish no earlier than 2008-05-07 |
| 35 | Layout PCB of logic board | 7d? | 2008-05-11 A | 2008-05-19 A |  | 100% | finish no earlier than 2008-05-19 |
| 36 | BE instruction working | 5d? | 2008-05-12 A | 2008-05-16 A |  | 100% | finish no earlier than 2008-05-18 |
| 37 | Layout ALU board | 11d? | 2008-05-05 A | 2008-05-19 A |  | 100% | finish no earlier than 2008-05-19 |
| 38 | 3-trit high-level language specification | 23d? | 2008-04-28 A | 2008-05-27 A |  | 100% | finish no earlier than 2008-05-27 |
| 39 | Jeff - Ch4: Machine Language | 6d? | 2008-04-28 A | 2008-05-05 A |  | 100% | finish no earlier than 2008-05-05 |
| 40 | Antonio - Ch7: VM I: Stack Arithmetic | 11d? | 2008-04-28 A | 2008-05-12 A |  | 100% | finish no earlier than 2008-05-12 |
| 41 | Jeff - Ch5: Computer Architecture | 6d? | 2008-05-05 A | 2008-05-12 A |  | 100% | finish no earlier than 2008-05-12 |
| 42 | Antonio - Ch8: VM II: Program Control | 6d? | 2008-05-05 A | 2008-05-12 A |  | 100% | finish no earlier than 2008-05-12 |
| 43 | Antonio - Ch9: High-level Language | 16d? | 2008-05-06 A | 2008-05-26 A |  | 100% | finish no earlier than 2008-05-26 |
| 44 | eval.py return 0, i, 1 | 11d? | 2008-04-28 A | 2008-05-12 A |  | 100% | finish no earlier than 2008-05-12 |
| 45 | eval.py, allow literals 0, i, 1 | 12d? | 2008-04-29 A | 2008-05-13 A |  | 100% | finish no earlier than 2008-05-13 |
| 46 | eval.py, allow trit vectors as inputs | 19d? | 2008-04-29 A | 2008-05-22 A |  | 100% | finish no earlier than 2008-05-26 |
| 47 | Jeff - Ch6: Assembler | 6d? | 2008-05-12 A | 2008-05-19 A |  | 100% | finish no earlier than 2008-05-19 |
| 48 | CPU simulation, allow graceful termination | 14d? | 2008-05-06 A | 2008-05-22 A |  | 100% | finish no earlier than 2008-05-26 |
| 49 | Antonio - Ch10: Compiler I: Syntax Analysis | 11d? | 2008-05-12 A | 2008-05-26 A |  | 100% | finish no earlier than 2008-05-26 |
| 50 | Antonio - Enroll in senior project summer | 6d | 2008-05-19 A | 2008-05-26 A |  | 100% | start no earlier than 2008-05-19 |
| 51 | Senior project spec & schedule draft due | 6d? | 2008-05-16 A | 2008-05-23 A |  | 100% | finish no earlier than 2008-05-23 |
| 52 | Antonio - Ch11: Compiler II: Code Generation | 11d? | 2008-05-13 A | 2008-05-27 A |  | 100% | finish no earlier than 2008-05-27 |
| 53 | Find header to add to Trinary/Parts | 6d? | 2008-05-19 A | 2008-05-26 A |  | 100% | finish no earlier than 2008-05-26 |
| 54 | Find jumper wires to add to Trinary/Parts | 6d | 2008-05-19 A | 2008-05-26 A |  | 100% | start no earlier than 2008-05-19 |
| 55 | Demonstrate simulation of guess.t | 6d? | 2008-05-19 A | 2008-05-26 A |  | 100% | finish no earlier than 2008-05-26 |
| 56 | Jeff - Enroll in senior project summer | 10d | 2008-05-19 A | 2008-05-30 A |  | 100% | finish no earlier than 2008-05-30 |
| 57 | Design adder board | 6d? | 2008-05-19 A | 2008-05-26 A |  | 100% | finish no earlier than 2008-05-26 |
| 58 | Design sign board | 6d? | 2008-05-19 A | 2008-05-26 A |  | 100% | finish no earlier than 2008-05-26 |
| 59 | Prepare for CSC IAB Presentation | 9d? | 2008-05-20 A | 2008-05-30 A |  | 100% | finish no earlier than 2008-05-30 |
| 60 | Jeff - Make schedule for summer | 4d? | 2008-05-27 A | 2008-05-30 A |  | 100% | start no earlier than 2008-05-27 |
| 61 | Antonio - Make schedule for summer | 4d? | 2008-05-27 A | 2008-05-30 A |  | 100% | finish no earlier than 2008-05-30 |
| 62 | Honors Progress Report Due | 3d? | 2008-05-27 A | 2008-05-29 A |  | 100% | start no earlier than 2008-05-27 |
| 63 | Jeff - Ch1: Boolean Logic | 7d | 2008-05-22 A | 2008-05-30 A |  | 100% | finish no earlier than 2008-05-30 |
| 64 | Jeff - Ch2: Boolean Arithmetic | 7d | 2008-05-22 A | 2008-05-30 A |  | 100% | finish no earlier than 2008-05-30 |
| 65 | Jeff - Ch3: Sequential Logic | 7d | 2008-05-22 A | 2008-05-30 A |  | 100% | finish no earlier than 2008-05-30 |
| 66 | Antonio - Ch12: Operating System | 6d? | 2008-05-26 A | 2008-06-02 A |  | 100% | finish no earlier than 2008-06-02 |
| 67 | Chirag - Construct & text mux PCB | 10d | 2008-05-19 A | 2008-05-30 A |  | 100% | finish no earlier than 2008-05-30 |
| 68 | Chirag - Make schedule for summer | 4d? | 2008-05-27 A | 2008-05-30 A |  | 100% | finish no earlier than 2008-05-30 |
| 69 | Honors Final Report Due (9 pm) | 5d? | 2008-06-02 A | 2008-06-06 A |  | 100% | finish no earlier than 2008-06-06 |
| 70 | Senior project spec & schedule final due | 6d? | 2008-05-30 A | 2008-06-06 A |  | 100% | finish no earlier than 2008-06-06 |

Notes:
- 18: 2008-04-03 Jeff requested quote #3 from Digi-Key / 2008-04-08 Chirag gave quote #3 to Cindy to order / 2008-04-14 Contacted Debbie Tuson, extension 6-6116 on campus, said she would give the order to the purchasing girl this morning

| ID | Task | Duration | Start | Finish | Complete | Remaining | Total slack | Constraint |
| --- | --- | --- | --- | --- | --- | --- | --- | --- |
| 71 | Green=Jeff, Red=Antonio (below) | 1d? | 2008-06-23 A | 2008-06-23 A | 100% |  |  | start no earlier than 2008-06-23 |
| 72 | Define ASCII symbols for trinary | 25d? | 2008-05-27 A | 2008-06-30 A | 100% |  |  | finish no earlier than 2008-06-30 |
| 73 | Interface for base converter | 25d? | 2008-05-27 A | 2008-06-30 A | 100% |  |  | finish no earlier than 2008-06-30 |
| 74 | Base converter: int_cnvrt("111",3,10) | 25d? | 2008-05-27 A | 2008-06-30 A | 100% |  |  | finish no earlier than 2008-06-30 |
| 75 | Base converter: int_cnvrt("10i",-3,10) | 35d? | 2008-05-27 A | 2008-07-14 A | 100% |  |  | finish no earlier than 2008-07-20 |
| 76 | Base converter: to balanced trinary | 35d? | 2008-05-27 A | 2008-07-14 A | 100% |  |  | finish no earlier than 2008-07-20 |
| 77 | Clock board designed | 6d | 2008-06-30 A | 2008-07-07 A | 100% |  |  | finish no earlier than 2008-07-07 |
| 78 | Logic board designed | 21d? | 2008-06-30 A | 2008-07-28 A | 100% |  |  | finish no earlier than 2008-07-28 |
| 79 | Design clock generator circuit | 6d? | 2008-06-30 A | 2008-07-07 A | 100% |  |  | finish no earlier than 2008-07-07 |
| 80 | Interconnect diagram finished | 12d | 2008-06-30 A | 2008-07-15 A | 100% |  |  | start no earlier than 2008-06-30 |
| 81 | Expr creator user interface | 25d? | 2008-05-27 A | 2008-06-30 A | 100% |  |  | finish no earlier than 2008-06-30 |
| 82 | Verify I/O board footprints | 11d? | 2008-06-30 A | 2008-07-14 A | 100% |  |  | finish no earlier than 2008-07-14 |
| 83 | Expr creator: replace names with expressions | 45d? | 2008-05-27 A | 2008-07-28 A | 100% |  |  | finish no earlier than 2008-07-28 |
| 84 | Green=Jeff, Red=Antonio | 1d? | 2008-06-23 A | 2008-06-23 A | 100% |  |  | start no earlier than 2008-06-23 |
| 85 | Find pinout of DP3T chips | 4d? | 2008-07-21 A | 2008-07-24 A | 100% |  |  | finish no earlier than 2008-07-24 |
| 86 | TCA0 interconnects documented | 6d? | 2008-07-21 A | 2008-07-28 A | 100% |  |  | finish no earlier than 2008-07-28 |
| 87 | Construct and test dtflop-ms2 boards | 21d? | 2008-06-30 A | 2008-07-28 A | 100% |  |  | finish no earlier than 2008-07-28 |
| 88 | Build & test swrom-fixed | 17d? | 2008-07-04 A | 2008-07-28 A | 100% |  |  | finish no earlier than 2008-07-28 |
| 89 | Parser and tokenizer functional | 6d? | 2008-07-14 A | 2008-07-21 A | 100% |  |  | finish no earlier than 2008-07-21 |
| 90 | Code review eval.py | 6d | 2008-07-21 A | 2008-07-28 A | 100% |  |  | start no earlier than 2008-07-20 |
| 91 | Define new game for TCA0 | 1d? | 2008-07-28 A | 2008-07-28 A | 100% |  |  | start no earlier than 2008-07-28 |
| 92 | Expr creator document how to use | 6d? | 2008-07-21 A | 2008-07-28 | 83% | 1d? | 35d | finish no earlier than 2008-07-28 |
| 93 | Chirag - Photoshop VTC curve | 67d? | 2008-04-28 A | 2008-07-28 | 76% | 16d? | 35d | finish no earlier than 2008-07-28 |
| 94 | Construct and test ALU boards or not | 21d? | 2008-06-30 A | 2008-07-28 | 48% | 11d? | 35d | finish no earlier than 2008-07-28 |
| 95 | CPE Analysis of Senior Project Design | 6d | 2008-07-21 | 2008-07-28 |  |  | 35d | finish no earlier than 2008-07-28 |
| 96 | Extended CPU assembler functional | 28d? | 2008-06-23 A | 2008-07-30 | 54% | 13d? | 33d | finish no earlier than 2008-07-30 |
| 97 | Extended CPU simulator functional | 28d? | 2008-06-23 A | 2008-07-30 | 54% | 13d? | 33d | finish no earlier than 2008-07-30 |
| 98 | Clean up website | 16d | 2008-07-14 A | 2008-08-04 | 31% | 11d | 30d | finish no earlier than 2008-08-04 |
| 99 | Construct and test logic board | 15d? | 2008-07-14 | 2008-08-01 |  |  | 31d | finish no earlier than 2008-08-01 |
| 100 | All boards physically constructed | 76d? | 2008-04-21 A | 2008-08-01 | 68% | 24d? | 31d | finish no earlier than 2008-08-01 |
| 101 | Compiler structure planned | 6d? | 2008-07-21 | 2008-07-28 |  |  | 35d | finish no earlier than 2008-07-28 |
| 102 | Control flow graph generated | 6d? | 2008-07-21 | 2008-07-28 |  |  | 35d | finish no earlier than 2008-07-28 |
| 103 | Begin interconnection of all boards | 6d? | 2008-07-21 | 2008-07-28 |  |  | 35d | finish no earlier than 2008-07-28 |
| 104 | Fix test case failure in eval.py | 1d? | 2008-07-28 | 2008-07-28 |  |  | 35d | start no earlier than 2008-07-28 |
| 105 | CPE Report Rough Draft | 12.5d | 2008-07-17 | 2008-08-04 |  |  | 30d | finish no earlier than 2008-08-04 |
| 106 | ILOC generated | 11d? | 2008-07-21 | 2008-08-04 |  |  | 30d | finish no earlier than 2008-08-04 |
| 107 | ILOC -> trinary assembly | 6d? | 2008-07-28 | 2008-08-04 |  |  | 30d | start no earlier than 2008-07-28 |
| 108 | Code review base_converter.py | 6d | 2008-07-28 | 2008-08-04 |  |  | 30d | start no earlier than 2008-07-26 |
| 109 | Test complete CPU | 6d? | 2008-07-28 | 2008-08-04 |  |  | 30d | start no earlier than 2008-07-28 |
| 110 | Design output LED circuit | 6d? | 2008-07-28 | 2008-08-04 |  |  | 30d | finish no earlier than 2008-08-04 |
| 111 | Two-pass assembler | 6d | 2008-08-04 | 2008-08-11 |  |  | 25d | start no earlier than 2008-08-04 |
| 112 | Compiler register allocation complete | 6d? | 2008-08-04 | 2008-08-11 |  |  | 25d | finish no earlier than 2008-08-11 |
| 113 | Code review CPU simulator | 6d | 2008-08-08 | 2008-08-15 |  |  | 21d | finish no earlier than 2008-08-15 |
| 114 | CPE Senior Project Requirements | 11d | 2008-08-01 | 2008-08-15 |  |  | 21d | finish no earlier than 2008-08-15 |
| 115 | CPE Report Finished | 11d? | 2008-08-01 | 2008-08-15 |  |  | 21d | finish no earlier than 2008-08-15 |
| 116 | Compiler functional | 11d? | 2008-08-01 | 2008-08-15 |  |  | 21d | start no earlier than 2008-08-01 |
| 117 | Entire system functional and working | 11d? | 2008-08-01 | 2008-08-15 |  |  | 21d | start no earlier than 2008-08-01 |
| 118 | Last day of Cal Poly summer classes | 1d? | 2008-08-15 | 2008-08-15 |  |  | 21d | finish no earlier than 2008-08-15 |
| 119 | Honors funds expended by | 61d? | 2008-06-23 | 2008-09-15 |  |  | 0d | start no earlier than 2008-06-23 |

Notes:
- 95: http://www.cpe.calpoly.edu/students/Sr_Project_Design_Form.pdf
- 105: http://www.cpe.calpoly.edu/students/srprojectinfo.html
